# Construction (School Building)

Schedule from MS Project, 2022-04-01 to 2023-01-02, status date 2022-11-15, costs in RM, A marks actual dates.

## Calendars

- Standard: Mon-Fri 08:00-12:00, 13:00-17:00; Sat-Sun off.

## Resources

| Resource | Rate | Cost per use |
| --- | --- | --- |
| Materials |  |  |
| Staff |  |  |
| Architect | 50 | 1000 |
| Owner |  |  |
| General Contractor | 40 |  |
| Wood | 100 |  |
| Concrete | 210 |  |
| Steel Rebar | 500 |  |
| Electricity | 0.5 |  |
| Inspector | 20 |  |
| Civil Engineer | 30 |  |
| Mason | 12 |  |
| Unskilled Laborer | 5 |  |
| Surveyor | 20 |  |
| Subcontractors | 20 |  |
| Paint | 42 |  |
| Drywall | 75 |  |
| Sanitary Wares | 36 |  |
| Excavator |  | 3000 |
| Machinery |  |  |
| Dumper |  | 500 |
| Soil Compactor |  | 1000 |
| Generator | 5000 |  |
| Concrete Mixer |  | 800 |
| Backhoe |  | 3000 |
| Truck |  | 500 |
| MEP Engineer | 30 |  |
| Skilled Laborer | 8 |  |
| Cartographer | 20 |  |
| Quanity Surveyor | 20 |  |
| Landscape Architect | 20 |  |
| Windows | 60 |  |
| Doors | 190 |  |
| Insulation | 40 |  |

## Schedule

| ID | WBS | Task | Type | Duration | Start | Finish | Predecessors | Complete | Remaining | Baseline start | Baseline finish | Baseline duration | Total slack | Free slack | Constraint | Deadline | Resources | Work | Actual work | Cost | Baseline cost | Actual cost |
| --- | --- | --- | --- | --- | --- | --- | --- | --- | --- | --- | --- | --- | --- | --- | --- | --- | --- | --- | --- | --- | --- | --- |
| 1 | 1 | **General Conditions** |  | 31d | 2022-04-01 A | 2022-05-13 |  | 99% | 0d | 2022-04-01 | 2022-05-13 | 31d | 3d |  |  |  |  | 240h | 240h | 12,520 |  | 12,520 |
| 2 | 1.1 | Finalize plans, and develop estimation with owner and architect |  | 28d | 2022-04-01 A | 2022-05-10 |  | 99% | 0d | 2022-04-01 | 2022-05-12 | 30d | 3d | 2d |  |  | Architect; Owner; General Contractor | 224h | 224h | 12,200 |  | 12,200 |
| 3 | 1.2 | Sign the contract & notice to proceed the construction work |  | 1d | 2022-05-13 A | 2022-05-13 | 2 | 99% | 0d | 2022-05-13 | 2022-05-13 | 1d | 3d | 1d |  |  | Architect; Owner; General Contractor | 16h | 16h | 320 |  | 320 |
| 4 | 2 | **Land and Quantity Surveying** |  | 4d | 2022-05-13 A | 2022-05-18 |  | 99% | 0d |  |  |  | 0d |  | start no earlier than 2022-05-13 |  |  | 64h | 64h | 1,240 |  | 1,240 |
| 5 | 2.1 | Measure Land Boundaries |  | 1d | 2022-05-13 A | 2022-05-13 A |  | 100% |  |  |  |  |  |  |  |  | Surveyor; Unskilled Laborer | 16h | 16h | 200 |  | 200 |
| 6 | 2.2 | Prepare Site Layout Plan |  | 2d | 2022-05-16 A | 2022-05-17 | 5 | 99% | 0d |  |  |  | 0d |  |  |  | Surveyor; Cartographer; Landscape Architect | 32h | 32h | 640 |  | 640 |
| 7 | 2.3 | Estimate Quantities Needed for Project |  | 1d | 2022-05-18 A | 2022-05-18 A | 6 | 100% |  |  |  |  |  |  |  |  | Civil Engineer; Quanity Surveyor | 16h | 16h | 400 |  | 400 |
| 8 | 3 | **Apply for permits** |  | 6d | 2022-05-17 A | 2022-05-24 | 7 | 78% | 1.33d | 2022-05-10 | 2022-05-23 | 10d |  |  |  |  |  | 80h | 80h | 960 |  | 960 |
| 9 | 3.1 | Collect school zoning permit |  | 2d | 2022-05-17 A | 2022-05-18 | 3 | 50% | 1d | 2022-05-17 | 2022-05-17 | 1d | 0d |  |  |  | Architect; Civil Engineer; General Contractor | 8h | 8h |  |  |  |
| 10 | 3.2 | Collect foundation permit |  | 2d | 2022-05-17 A | 2022-05-18 | 3 | 50% | 1d | 2022-05-17 | 2022-05-17 | 1d | 0d |  |  |  | Architect; Civil Engineer; General Contractor | 8h | 8h |  |  |  |
| 11 | 3.3 | Collect framing permit |  | 1d | 2022-05-18 A | 2022-05-18 | 3 | 99% | 0d | 2022-05-18 | 2022-05-18 | 1d | 0d |  |  |  | Architect; Civil Engineer; General Contractor | 8h | 8h |  |  |  |
| 12 | 3.4 | Collect electric utility permit |  | 1d | 2022-05-19 A | 2022-05-19 | 3 | 99% | 0d | 2022-05-19 | 2022-05-19 | 1d | 0d |  |  |  | Architect; MEP Engineer; General Contractor | 16h | 16h | 320 |  | 320 |
| 13 | 3.5 | Collect plumbing line permit |  | 1d | 2022-05-20 A | 2022-05-20 | 3 | 99% | 0d | 2022-05-20 | 2022-05-20 | 1d | 0d |  |  |  | Architect; MEP Engineer; General Contractor | 16h | 16h | 320 |  | 320 |
| 14 | 3.6 | Collect HVAC permit |  | 1d | 2022-05-23 A | 2022-05-23 | 3 | 99% | 0d | 2022-05-23 | 2022-05-23 | 1d | 0d |  |  |  | Architect; MEP Engineer; General Contractor | 16h | 16h | 320 |  | 320 |
| 15 | 3.7 | Collect any other necessary permits |  | 1d | 2022-05-23 A | 2022-05-23 A | 14 | 100% |  | 2022-05-16 | 2022-05-16 | 1d |  |  | start no earlier than 2022-05-10 |  | Architect | 8h | 8h |  |  |  |
| 16 | 3.8 | All Permits Granted | milestone | 0d | 2022-05-24 A | 2022-05-24 A |  | 100% |  | 2022-05-10 | 2022-05-10 | 0d |  |  | finish no later than 2022-05-24 | 2022-06-01 |  |  |  |  |  |  |
| 17 | 4 | **Preliminiary Site Work** |  | 4d | 2022-05-24 A | 2022-05-27 |  | 99% | 0d | 2022-05-24 | 2022-05-26 | 3d | 0d |  | start no earlier than 2022-05-24 |  |  | 432h | 432h | 2,408 | 400 | 2,408 |
| 18 | 4.1 | Clear site from debris |  | 2d | 2022-05-24 A | 2022-05-25 A | 10, 11, 12, 13, 15, 14, 9 | 100% |  | 2022-05-24 | 2022-05-24 | 1d |  |  |  |  | Unskilled Laborer [1000%] | 88h | 88h | 440 | 400 | 440 |
| 19 | 4.2 | Install temporary electricity service |  | 2d | 2022-05-25 A | 2022-05-26 | 18 | 99% | 0d | 2022-05-25 | 2022-05-25 | 1d | 1d | 0d |  |  | Skilled Laborer [300%]; MEP Engineer; Unskilled Laborer [2000%]; Generator | 320h | 320h | 1,600 |  | 1,600 |
| 20 | 4.3 | Install underground utilities |  | 1d | 2022-05-26 A | 2022-05-27 | 19 | 99% | 0d | 2022-05-26 | 2022-05-26 | 1d | 0d |  |  |  | Unskilled Laborer [1000%]; Skilled Laborer [200%]; MEP Engineer | 24h | 24h | 368 |  | 368 |
| 21 | 4.4 | All Site Work Complete | milestone | 0d | 2022-05-26 A | 2022-05-26 A | 20 | 100% |  | 2022-05-26 | 2022-05-26 | 0d |  |  | must finish on 2022-05-26 | 2022-05-26 |  |  |  |  |  |  |
| 22 | 5 | **Foundation** |  | 42d | 2022-05-27 A | 2022-07-25 A |  | 100% |  | 2022-05-27 | 2022-07-25 | 42d |  |  |  |  |  | 48h | 48h | 9,832 | 50,720 | 9,832 |
| 23 | 5.1 | Excavate for foundations |  | 3d | 2022-05-27 A | 2022-05-31 A | 21 | 100% |  | 2022-05-27 | 2022-05-31 | 3d |  |  | start no earlier than 2022-05-26 |  | Excavator; Skilled Laborer | 24h | 24h | 3,192 | 1,200 | 3,192 |
| 24 | 5.2 | Perform foundation inspection |  | 1d | 2022-07-21 A | 2022-07-21 A | 23 | 100% |  | 2022-07-21 | 2022-07-21 | 1d |  |  |  |  | Inspector | 8h | 8h | 160 |  | 160 |
| 25 | 5.3 | Backfill foundation |  | 2d | 2022-07-22 A | 2022-07-25 A | 24 | 100% |  | 2022-07-22 | 2022-07-25 | 2d |  |  |  |  | Civil Engineer; Excavator; Backhoe | 16h | 16h | 6,480 | 800 | 6,480 |
| 26 | 5.4 | Foundation Complete | milestone | 0d | 2022-07-25 A | 2022-07-25 A | 25 | 100% |  | 2022-07-25 | 2022-07-25 | 0d |  |  |  |  |  |  |  |  |  |  |

| ID | WBS | Task | Type | Duration | Start | Finish | Predecessors | Complete | Remaining | Baseline start | Baseline finish | Baseline duration | Total slack | Free slack | Resources | Work | Actual work | Cost | Actual cost |
| --- | --- | --- | --- | --- | --- | --- | --- | --- | --- | --- | --- | --- | --- | --- | --- | --- | --- | --- | --- |
| 27 | 6 | **Formwork** |  | 22d | 2022-07-26 A | 2022-08-24 |  | 99% | 0d | 2022-07-26 | 2022-08-24 | 22d | 0d |  |  | 176h | 176h | 3,488 | 3,488 |
| 28 | 6.1 | Install 1st floor joists |  | 2d | 2022-07-26 A | 2022-07-27 | 26 | 99% | 0d | 2022-07-26 | 2022-07-27 | 2d | 0d |  | Civil Engineer; Skilled Laborer | 16h | 16h | 480 | 480 |
| 29 | 6.2 | Lay 1st floor decking |  | 2d | 2022-07-28 A | 2022-07-29 A | 28 | 100% |  | 2022-07-28 | 2022-07-29 | 2d |  |  | Unskilled Laborer [200%] | 16h | 16h | 80 | 80 |
| 30 | 6.3 | Frame 1st floor walls |  | 3d | 2022-08-01 A | 2022-08-03 | 29 | 99% | 0d | 2022-08-01 | 2022-08-03 | 3d | 0d |  | Unskilled Laborer [200%]; Mason; Concrete [400%] | 24h | 24h | 960 | 960 |
| 31 | 6.4 | Frame 1st floor corners |  | 1d | 2022-08-04 A | 2022-08-04 A | 30 | 100% |  | 2022-08-04 | 2022-08-04 | 1d |  |  | Unskilled Laborer [200%] | 8h | 8h | 40 | 40 |
| 32 | 6.5 | Install 2nd floor joists |  | 2d | 2022-08-05 A | 2022-08-08 A | 31 | 100% |  | 2022-08-05 | 2022-08-08 | 2d |  |  | Skilled Laborer | 16h | 16h | 128 | 128 |
| 33 | 6.6 | Frame 2nd floor decking |  | 3d | 2022-08-09 A | 2022-08-11 A | 32 | 100% |  | 2022-08-09 | 2022-08-11 | 3d |  |  | Unskilled Laborer [200%] | 24h | 24h | 120 | 120 |
| 34 | 6.7 | Frame 2nd floor walls |  | 3d | 2022-08-12 A | 2022-08-16 | 33 | 99% | 0d | 2022-08-12 | 2022-08-16 | 3d | 0d |  | Unskilled Laborer [200%]; Mason; Concrete [400%] | 24h | 24h | 960 | 960 |
| 35 | 6.8 | Frame 2nd floor corners |  | 2d | 2022-08-17 A | 2022-08-18 A | 34 | 100% |  | 2022-08-17 | 2022-08-18 | 2d |  |  | Unskilled Laborer [200%] | 16h | 16h | 80 | 80 |
| 36 | 6.9 | Complete roof framing |  | 3d | 2022-08-19 A | 2022-08-23 | 35 | 99% | 0d | 2022-08-19 | 2022-08-23 | 3d | 0d |  | Unskilled Laborer; Subcontractors | 24h | 24h | 480 | 480 |
| 37 | 6.10 | Conduct framing inspection |  | 1d | 2022-08-24 A | 2022-08-24 A | 36 | 100% |  | 2022-08-24 | 2022-08-24 | 1d |  |  | Inspector | 8h | 8h | 160 | 160 |
| 38 | 6.11 | Framing Complete | milestone | 0d | 2022-08-24 A | 2022-08-24 A | 37 | 100% |  | 2022-08-24 | 2022-08-24 | 0d |  |  |  |  |  |  |  |
| 39 | 7 | **Dry In** |  | 22d | 2022-08-24 A | 2022-09-22 |  | 99% | 0d | 2022-08-24 | 2022-09-26 | 24d | 0d |  |  | 168h | 168h | 1,890 | 1,890 |
| 40 | 7.1 | Install 1st floor sheathing |  | 4d | 2022-08-25 A | 2022-08-30 | 38 | 99% | 0d | 2022-08-29 | 2022-08-31 | 3d | 2d | 0d | Unskilled Laborer; Civil Engineer | 32h | 32h | 160 | 160 |
| 41 | 7.2 | Install 2nd floor sheathing |  | 3d | 2022-08-30 A | 2022-09-01 | 40 | 99% | 0d | 2022-09-01 | 2022-09-05 | 3d | 7d | 0d | Unskilled Laborer; Civil Engineer | 24h | 24h | 120 | 120 |
| 42 | 7.3 | Install roof decking |  | 3d | 2022-08-24 A | 2022-08-26 A | 36 | 100% |  | 2022-08-24 | 2022-08-26 | 3d |  |  | Unskilled Laborer | 24h | 24h | 120 | 120 |
| 43 | 7.4 | Install felt, flashing and shingles |  | 3d | 2022-09-09 A | 2022-09-13 A | 53 | 100% |  | 2022-09-13 | 2022-09-15 | 3d |  |  | Unskilled Laborer | 24h | 24h | 120 | 120 |
| 44 | 7.5 | Hang 1st floor exterior doors |  | 2d | 2022-09-14 A | 2022-09-15 A | 43 | 100% |  | 2022-09-16 | 2022-09-16 | 1d |  |  | Unskilled Laborer; Doors [300%] | 16h | 16h | 650 | 650 |
| 45 | 7.6 | Install 1st floor windows |  | 3d | 2022-09-15 A | 2022-09-19 A | 44 | 100% |  | 2022-09-19 | 2022-09-21 | 3d |  |  | Unskilled Laborer; Windows [400%] | 24h | 24h | 360 | 360 |
| 46 | 7.7 | Install 2nd floor windows |  | 3d | 2022-09-20 A | 2022-09-22 A | 45 | 100% |  | 2022-09-22 | 2022-09-26 | 3d |  |  | Unskilled Laborer; Windows [400%] | 24h | 24h | 360 | 360 |
| 47 | 7.8 | Dry In Complete | milestone | 0d | 2022-09-22 A | 2022-09-22 A | 46 | 100% |  | 2022-09-26 | 2022-09-26 | 0d |  |  |  |  |  |  |  |
| 48 | 8 | **Exterior Finishings** |  | 20d | 2022-09-23 A | 2022-10-20 |  | 99% | 0d | 2022-09-27 | 2022-10-20 | 18d | 0d |  |  | 152h | 152h | 760 | 760 |
| 49 | 8.1 | Complete exterior brick |  | 15d | 2022-09-23 A | 2022-10-13 | 47 | 99% | 0d | 2022-09-27 | 2022-10-17 | 15d | 5d | 1d | Unskilled Laborer; Mason | 120h | 120h | 600 | 600 |
| 50 | 8.2 | Complete exterior siding |  | 4d | 2022-10-17 A | 2022-10-20 | 49 | 99% | 0d | 2022-10-18 | 2022-10-20 | 3d | 0d |  | Unskilled Laborer; Mason | 32h | 32h | 160 | 160 |
| 51 | 8.3 | Exterior Finishings Complete | milestone | 0d | 2022-10-18 A | 2022-10-18 A | 50 | 100% |  | 2022-10-20 | 2022-10-20 | 0d |  |  |  |  |  |  |  |

| ID | WBS | Task | Type | Duration | Start | Finish | Predecessors | Complete | Remaining | Baseline start | Baseline finish | Baseline duration | Total slack | Free slack | Constraint | Deadline | Resources | Work | Actual work | Cost | Baseline cost | Actual cost |
| --- | --- | --- | --- | --- | --- | --- | --- | --- | --- | --- | --- | --- | --- | --- | --- | --- | --- | --- | --- | --- | --- | --- |
| 52 | 9 | **Utility Rough-Ins and Complete Concrete** |  | 20d | 2022-08-29 A | 2022-09-23 |  | 63% | 7.41d | 2022-08-29 | 2022-09-28 | 23d | 1d |  |  |  |  | 104h | 104h | 3,330 | 16,800 | 3,330 |
| 53 | 9.1 | Rough-in plumbing |  | 4d | 2022-09-02 A | 2022-09-07 | 42, 41 |  | 4d | 2022-09-06 | 2022-09-12 | 5d | 3d | 1d |  |  | Skilled Laborer; MEP Engineer; Sanitary Wares [1000%] |  |  | 360 |  | 360 |
| 54 | 9.2 | Conduct rough-in plumbing inspection |  | 1d | 2022-09-08 A | 2022-09-09 | 53 |  | 1d | 2022-09-14 | 2022-09-14 | 1d | 1d | 0d |  |  | Inspector |  |  |  |  |  |
| 55 | 9.3 | Place concrete for basement floor |  | 10d | 2022-09-12 A | 2022-09-23 | 54 | 99% | 0d | 2022-09-15 | 2022-09-28 | 10d | 0d |  |  |  | Unskilled Laborer; Concrete [500%]; Concrete Mixer | 80h | 80h | 2,250 | 16,800 | 2,250 |
| 56 | 9.4 | Rough-in electrical |  | 5d | 2022-09-02 A | 2022-09-08 | 42, 41 |  | 5d | 2022-09-06 | 2022-09-12 | 5d | 12d | 10d |  |  | Unskilled Laborer; MEP Engineer |  |  |  |  |  |
| 57 | 9.5 | Conduct rough-in electrical inspection |  | 1d | 2022-09-09 A | 2022-09-09 A | 56 | 100% |  | 2022-09-13 | 2022-09-13 | 1d |  |  |  |  | Inspector |  |  |  |  |  |
| 58 | 9.6 | Rough-in HVAC |  | 3d | 2022-09-12 A | 2022-09-14 | 57 | 99% | 0d | 2022-09-14 | 2022-09-16 | 3d | 8d | 6d |  |  | Unskilled Laborer; MEP Engineer | 24h | 24h | 720 |  | 720 |
| 59 | 9.7 | Conduct rough-in HVAC inspection |  | 1d | 2022-09-15 A | 2022-09-15 A | 58 | 100% |  | 2022-09-19 | 2022-09-19 | 1d |  |  |  |  | Inspector |  |  |  |  |  |
| 60 | 9.8 | Rough-in communication - phone, cable, computer, alarm |  | 2d | 2022-08-29 A | 2022-08-30 A | 42 | 100% |  | 2022-08-29 | 2022-08-30 | 2d |  |  |  |  | Unskilled Laborer |  |  |  |  |  |
| 61 | 9.9 | Utility Rough-ins Complete | milestone | 0d | 2022-08-30 A | 2022-08-30 A | 60 | 100% |  | 2022-08-30 | 2022-08-30 | 0d |  |  |  | 2022-09-01 |  |  |  |  |  |  |
| 62 | 10 | **Interior Finishes** |  | 147d | 2022-04-01 A | 2022-10-24 |  | 92% | 11.31d | 2022-09-15 | 2022-10-26 | 30d | 0d |  |  |  |  | 368h | 368h | 7,186 |  | 7,186 |
| 63 | 10.1 | **Insulation** |  | 11d | 2022-09-23 A | 2022-10-07 |  | 75% | 2.75d | 2022-09-27 | 2022-10-11 | 11d | 0d |  |  |  |  | 24h | 24h | 560 |  | 560 |
| 64 | 10.1.1 | Place wall insulation - 1st floor |  | 1d | 2022-09-23 A | 2022-09-23 | 40, 46, 60, 58, 56, 41 |  | 1d | 2022-09-27 | 2022-09-27 | 1d | 1d | 0d | finish no earlier than 2022-09-02 |  | Unskilled Laborer; Insulation [800%] |  |  | 320 |  | 320 |
| 65 | 10.1.2 | Place wall insulation - 2nd floor |  | 1d | 2022-09-26 A | 2022-09-26 | 64 | 99% | 0d | 2022-09-28 | 2022-09-28 | 1d | 8d | 7d |  |  | Unskilled Laborer; Insulation | 8h | 8h | 40 |  | 40 |
| 66 | 10.1.3 | Place ceiling insulation - 2nd floor |  | 1d | 2022-10-06 A | 2022-10-06 | 72, 65 | 99% | 0d | 2022-10-10 | 2022-10-10 | 1d | 0d |  |  |  | Unskilled Laborer; Insulation | 8h | 8h | 40 |  | 40 |
| 67 | 10.1.4 | Conduct insulation inspection |  | 1d | 2022-10-07 A | 2022-10-07 A | 66 | 100% |  | 2022-10-11 | 2022-10-11 | 1d |  |  |  |  | Inspector | 8h | 8h | 160 |  | 160 |
| 68 | 10.2 | **Drywall** |  | 9d | 2022-09-26 A | 2022-10-06 A |  | 100% |  | 2022-09-28 | 2022-10-11 | 10d |  |  |  |  |  | 80h | 80h | 2,200 |  | 2,200 |
| 69 | 10.2.1 | Install drywall - 1st floor walls |  | 2d | 2022-09-26 A | 2022-09-27 A | 64 | 100% |  | 2022-09-28 | 2022-09-29 | 2d |  |  |  |  | Unskilled Laborer; Drywall [400%] | 16h | 16h | 380 |  | 380 |
| 70 | 10.2.2 | Install drywall - 1st floor overhead |  | 2d | 2022-09-28 A | 2022-09-29 A | 69 | 100% |  | 2022-09-30 | 2022-10-03 | 2d |  |  |  |  | Unskilled Laborer; Drywall [400%] | 16h | 16h | 380 |  | 380 |
| 71 | 10.2.3 | Install drywall 2nd floor walls |  | 2d | 2022-09-30 A | 2022-10-03 A | 70, 65 | 100% |  | 2022-10-04 | 2022-10-05 | 2d |  |  |  |  | Unskilled Laborer; Drywall [400%] | 16h | 16h | 380 |  | 380 |
| 72 | 10.2.4 | Install drywall 2nd floor overhead |  | 2d | 2022-10-04 A | 2022-10-05 A | 71 | 100% |  | 2022-10-06 | 2022-10-07 | 2d |  |  |  |  | Unskilled Laborer; Drywall [400%] | 16h | 16h | 380 |  | 380 |
| 73 | 10.2.5 | Tape and float 1st floor drywall |  | 1d | 2022-09-30 A | 2022-09-30 A | 70 | 100% |  | 2022-10-10 | 2022-10-10 | 1d |  |  |  |  | Unskilled Laborer; Drywall [400%] | 8h | 8h | 340 |  | 340 |
| 74 | 10.2.6 | Tape and float 2nd floor drywall |  | 1d | 2022-10-06 A | 2022-10-06 A | 72, 73 | 100% |  | 2022-10-11 | 2022-10-11 | 1d |  |  |  |  | Unskilled Laborer; Drywall [400%] | 8h | 8h | 340 |  | 340 |
| 75 | 10.3 | **Painting and Plastering** |  | 16d | 2022-10-03 A | 2022-10-24 A |  | 100% |  | 2022-10-11 | 2022-10-26 | 12d |  |  |  |  |  | 72h | 72h | 486 |  | 486 |
| 76 | 10.3.1 | Texture all except foyer and pantry - 1st floor |  | 1d | 2022-10-03 A | 2022-10-03 A | 73 | 100% |  | 2022-10-11 | 2022-10-11 | 1d |  |  |  |  | Unskilled Laborer | 8h | 8h | 40 |  | 40 |
| 77 | 10.3.2 | Paint all except foyer and pantry - 1st floor |  | 1d | 2022-10-04 A | 2022-10-04 A | 76 | 100% |  | 2022-10-17 | 2022-10-17 | 1d |  |  |  |  | Unskilled Laborer; Paint | 8h | 8h | 82 |  | 82 |
| 78 | 10.3.3 | Hang wallpaper entry and kitchen - 1st floor |  | 1d | 2022-10-05 A | 2022-10-05 A | 77 | 100% |  | 2022-10-18 | 2022-10-18 | 1d |  |  |  |  | Unskilled Laborer | 8h | 8h | 40 |  | 40 |
| 79 | 10.3.4 | Texture all - 2nd floor |  | 1d | 2022-10-04 A | 2022-10-04 A | 76 | 100% |  | 2022-10-12 | 2022-10-12 | 1d |  |  |  |  | Unskilled Laborer | 8h | 8h | 40 |  | 40 |
| 80 | 10.3.5 | Paint all - 2nd floor |  | 1d | 2022-10-05 A | 2022-10-05 A | 79 | 100% |  | 2022-10-13 | 2022-10-13 | 1d |  |  |  |  | Unskilled Laborer; Paint | 8h | 8h | 82 |  | 82 |
| 81 | 10.3.6 | Paint exterior siding & trim work |  | 4d | 2022-10-19 A | 2022-10-24 A | 50 | 100% |  | 2022-10-21 | 2022-10-26 | 4d |  |  |  |  | Unskilled Laborer; Paint | 32h | 32h | 202 |  | 202 |

| ID | WBS | Task | Type | Duration | Start | Finish | Predecessors | Complete | Remaining | Baseline start | Baseline finish | Baseline duration | Total slack | Free slack | Constraint | Deadline | Resources | Work | Actual work | Cost | Baseline cost | Actual cost |
| --- | --- | --- | --- | --- | --- | --- | --- | --- | --- | --- | --- | --- | --- | --- | --- | --- | --- | --- | --- | --- | --- | --- |
| 82 | 10.4 | **Finish Plumbing** |  | 6d | 2022-09-12 A | 2022-09-19 |  | 83% | 1d | 2022-09-15 | 2022-09-22 | 6d | 0d |  |  |  |  | 80h | 80h | 2,636 |  | 2,636 |
| 83 | 10.4.1 | Complete 1st floor - pantry plumbing |  | 1d | 2022-09-12 A | 2022-09-12 A | 54 | 100% |  | 2022-09-15 | 2022-09-15 | 1d |  |  |  |  | MEP Engineer; Skilled Laborer; Sanitary Wares | 16h | 16h | 340 |  | 340 |
| 84 | 10.4.2 | Complete 1st floor - public tandas plumbing |  | 2d | 2022-09-13 A | 2022-09-14 A | 83 | 100% |  | 2022-09-16 | 2022-09-19 | 2d |  |  |  |  | MEP Engineer; Skilled Laborer; Sanitary Wares [1500%] | 32h | 32h | 1,148 |  | 1,148 |
| 85 | 10.4.3 | Complete 2nd floor - public tandas plumbing |  | 2d | 2022-09-15 A | 2022-09-16 A | 84 | 100% |  | 2022-09-20 | 2022-09-21 | 2d |  |  |  |  | MEP Engineer; Skilled Laborer; Sanitary Wares [1500%] | 32h | 32h | 1,148 |  | 1,148 |
| 86 | 10.4.4 | Conduct finish plumbing inspection |  | 1d | 2022-09-16 A | 2022-09-19 | 85 |  | 1d | 2022-09-22 | 2022-09-22 | 1d | 0d |  |  |  | Inspector |  |  |  |  |  |
| 87 | 10.5 | **Finish Electrical** |  | 3d | 2022-09-19 A | 2022-09-21 |  | 80% | 0.6d | 2022-09-22 | 2022-09-28 | 5d | 0d |  |  |  |  | 40h | 40h | 624 |  | 624 |
| 88 | 10.5.1 | Complete 1st floor circuits to service panel |  | 1d | 2022-09-19 A | 2022-09-19 A | 85, 57 | 100% |  | 2022-09-22 | 2022-09-22 | 1d |  |  |  |  | Skilled Laborer; MEP Engineer | 8h | 8h | 240 |  | 240 |
| 89 | 10.5.2 | Complete 2nd floor circuits to service panel |  | 1d | 2022-09-20 A | 2022-09-20 A | 88 | 100% |  | 2022-09-27 | 2022-09-27 | 1d |  |  |  |  | Skilled Laborer; MEP Engineer | 16h | 16h | 304 |  | 304 |
| 90 | 10.5.3 | Conduct finish electrical inspection |  | 1d | 2022-09-20 A | 2022-09-21 | 89 |  | 1d | 2022-09-28 | 2022-09-28 | 1d | 0d |  |  |  | Inspector |  |  |  |  |  |
| 91 | 10.5.4 | Complete communications wiring - phone, cable, computer, alarm |  | 2d | 2022-09-20 A | 2022-09-21 A | 86 | 100% |  | 2022-09-23 | 2022-09-26 | 2d |  |  |  |  | Unskilled Laborer | 16h | 16h | 80 |  | 80 |
| 92 | 10.6 | **Finish HVAC** |  | 127d | 2022-04-01 A | 2022-09-26 |  | 99% | 0d | 2022-09-27 | 2022-09-29 | 3d | 0d |  |  |  |  | 72h | 72h | 680 |  | 680 |
| 93 | 10.6.1 | Complete 1st floor - area 1 HVAC |  | 1d | 2022-09-22 A | 2022-09-22 | 91, 59 | 99% | 0d | 2022-09-27 | 2022-09-27 | 1d | 1d | 0d |  |  | Unskilled Laborer [400%]; MEP Engineer | 8h | 8h | 40 |  | 40 |
| 94 | 10.6.2 | Complete 1st floor - area 2 HVAC |  | 1d | 2022-04-01 A | 2022-04-01 A |  | 100% |  |  |  |  |  |  |  |  | Unskilled Laborer [400%]; MEP Engineer | 40h | 40h | 400 |  | 400 |
| 95 | 10.6.3 | Complete 2nd floor - area 1 HVAC |  | 1d | 2022-09-23 A | 2022-09-23 | 93 | 99% | 0d | 2022-09-28 | 2022-09-28 | 1d | 0d |  |  |  | Unskilled Laborer [400%]; MEP Engineer | 8h | 8h | 40 |  | 40 |
| 96 | 10.6.4 | Complete 2nd floor - area 2 HVAC |  | 1d | 2022-09-23 A | 2022-09-23 | 93 | 99% | 0d | 2022-09-28 | 2022-09-28 | 1d | 0d |  |  |  | Unskilled Laborer [400%]; MEP Engineer | 8h | 8h | 40 |  | 40 |
| 97 | 10.6.5 | Conduct HVAC inspection |  | 1d | 2022-09-26 A | 2022-09-26 A | 95, 96 | 100% |  | 2022-09-29 | 2022-09-29 | 1d |  |  |  |  | Inspector | 8h | 8h | 160 |  | 160 |
| 98 | 11 | **Landscaping and Grounds Work** |  | 13d | 2022-10-25 A | 2022-11-10 |  | 77% | 3d | 2022-10-27 | 2022-11-14 | 13d | 0d |  |  |  |  | 80h | 80h | 4,650 | 11,760 | 4,650 |
| 99 | 11.1 | Pour concrete roads and pavements |  | 7d | 2022-10-25 A | 2022-11-02 | 81 | 99% | 0d | 2022-10-27 | 2022-11-04 | 7d | 5d | 0d |  |  | Unskilled Laborer; Concrete [500%]; Concrete Mixer | 56h | 56h | 2,130 | 11,760 | 2,130 |
| 100 | 11.2 | Install fence |  | 3d | 2022-11-03 A | 2022-11-07 | 99 |  | 3d | 2022-11-07 | 2022-11-09 | 3d | 2d | 0d | start no earlier than 2022-10-28 |  | Skilled Laborer; Wood [2400%] |  |  | 2,400 |  | 2,400 |
| 101 | 11.3 | Sod and complete plantings - front area |  | 2d | 2022-11-08 A | 2022-11-09 | 100 | 99% | 0d | 2022-11-10 | 2022-11-11 | 2d | 1d | 0d |  |  | Unskilled Laborer [300%]; Landscape Architect | 16h | 16h | 80 |  | 80 |
| 102 | 11.4 | Sod and complete plantings - back area |  | 1d | 2022-11-10 A | 2022-11-10 | 101 | 99% | 0d | 2022-11-14 | 2022-11-14 | 1d | 0d |  |  |  | Unskilled Laborer [300%]; Landscape Architect | 8h | 8h | 40 |  | 40 |
| 103 | 11.5 | Landscaping & Grounds Work Complete | milestone | 0d | 2022-11-10 A | 2022-11-10 A | 102 | 100% |  | 2022-11-14 | 2022-11-14 | 0d |  |  | must finish on 2022-11-10 |  |  |  |  |  |  |  |
| 104 | 12 | **Final Acceptance** |  | 6d | 2022-11-14 A | 2022-11-21 |  | 80% | 1.2d | 2022-11-15 | 2022-12-05 | 15d | 30d |  |  |  |  | 112h | 32h | 800 |  | 400 |
| 105 | 12.1 | Complete final inspection for certificate of occupancy |  | 1d | 2022-11-14 A | 2022-11-14 A | 97, 90, 86, 67, 55, 103 | 100% |  | 2022-11-15 | 2022-11-15 | 1d |  |  |  |  | Inspector | 8h | 8h | 160 |  | 160 |
| 106 | 12.2 | Cleanup for usage |  | 3d | 2022-11-14 A | 2022-11-16 | 105 | 67% | 1d | 2022-11-16 | 2022-11-16 | 1d | 3d | 2d |  |  | Unskilled Laborer [1000%] | 96h | 16h | 480 |  | 80 |
| 107 | 12.3 | Perform final walk-through inspection |  | 1d | 2022-11-20 A | 2022-11-21 | 106 | 99% | 0d | 2022-11-17 | 2022-11-17 | 1d | 0d |  |  |  | Inspector; Civil Engineer | 8h | 8h | 160 |  | 160 |
| 108 | 12.4 | School Construction Project Complete | milestone | 0d | 2022-11-21 | 2022-11-21 | 107 |  |  | 2022-12-05 | 2022-12-05 | 0d | 0d |  |  | 2023-01-05 |  |  |  |  |  |  |
| 109 | 13 | Handover |  | 1d | 2023-01-02 A | 2023-01-02 |  | 99% | 0d | 2022-11-15 | 2022-12-05 | 15d | 0d |  | finish no earlier than 2023-01-02 | 2023-01-06 | Civil Engineer; Owner; Architect; MEP Engineer | 8h | 8h | 1,240 |  | 240 |
